# Cotrems Model Scheduling

Schedule from MS Project, 2014-03-18 to 2014-05-16, A marks actual dates.

## Calendars

- Standard: Mon-Fri 08:00-12:00, 13:00-17:00; Sat-Sun off. Exceptions (off unless hours are given): 2014-04-18 to 2014-04-21 (Easter Wekend), 2014-04-28 (Freedom Day), 2014-05-01 (Workers Day), 2014-05-07 (Elections).

## Resources

| Resource |
| --- |
| Richard |
| Jaisheel |
| Dirk |
| Cady |

## Schedule

| ID | WBS | Task | Type | Duration | Start | Finish | Predecessors | Complete | Remaining | Total slack | Resources | Work | Actual work |
| --- | --- | --- | --- | --- | --- | --- | --- | --- | --- | --- | --- | --- | --- |
| 1 | 1 | Cotrem Project Kickoff | manual | 1h | 2014-03-18 08:00 A | 2014-03-18 09:00 A |  | 100% |  |  | Richard; Jaisheel; Dirk; Cady | 4h | 4h |
| 2 | 2 | Cotrem Model Analysis | manual | 4h | 2014-03-18 09:00 A | 2014-03-18 14:00 A | 1 | 100% |  |  | Jaisheel | 4h | 4h |
| 3 | 3 | Project Planning | manual | 2h | 2014-03-20 08:00 A | 2014-03-20 10:00 | 2 | 50% | 1h |  |  |  |  |
| 4 | 4 | **Model Simplification** |  | 1.5d | 2014-03-24 08:00 | 2014-03-25 12:00 |  |  |  | 0d |  | 16h |  |
| 5 | 4.1 | Model Object Deletion | manual | 4h | 2014-03-24 08:00 | 2014-03-24 12:00 |  |  |  |  | Cady; Jaisheel | 8h |  |
| 6 | 4.2 | Model Process Flow | manual | 4h | 2014-03-25 08:00 | 2014-03-25 12:00 |  |  |  |  | Cady; Jaisheel | 8h |  |
| 7 | 5 | **Infrastucture Setup** |  | 1.38d | 2014-03-26 08:00 | 2014-03-27 11:00 |  |  |  | 0d |  | 5h |  |
| 8 | 5.1 | Set Up Bitbucket repository for model export and template definitions | manual | 2h | 2014-03-26 08:00 | 2014-03-26 10:00 | 6 |  |  |  | Jaisheel | 2h |  |
| 9 | 5.2 | Initial Model Export | manual | 3h | 2014-03-27 08:00 | 2014-03-27 11:00 | 8 |  |  |  | Jaisheel | 3h |  |
| 10 | 6 | Model Hierachy Creation | manual | 8h | 2014-03-28 08:00 | 2014-03-28 17:00 | 9 |  |  |  | Jaisheel; Richard | 16h |  |
| 11 | 7 | **Template Definition Implementation** |  | 16.5d | 2014-03-31 08:00 | 2014-04-24 12:00 | 10 |  |  | 0d | Jaisheel; Richard | 528h |  |
| 12 | 7.1 | Concentrator- |  | 2d | 2014-03-31 08:00 | 2014-04-01 17:00 | 10 |  |  | 0d | Jaisheel; Richard | 32h |  |
| 13 | 7.2 | Smelter- |  | 2d | 2014-04-02 08:00 | 2014-04-03 17:00 | 12 |  |  | 0d | Jaisheel; Richard | 32h |  |
| 14 | 7.3 | Routing- |  | 1d | 2014-04-04 08:00 | 2014-04-04 17:00 | 13 |  |  | 0d | Jaisheel; Richard | 16h |  |
| 15 | 7.4 | Furnace- |  | 4h | 2014-04-07 08:00 | 2014-04-07 12:00 | 14 |  |  | 0d | Jaisheel; Richard | 8h |  |
| 16 | 7.5 | Routes- |  | 4h | 2014-04-07 13:00 | 2014-04-07 17:00 | 15 |  |  | 0d | Jaisheel; Richard | 8h |  |
| 17 | 7.6 | Generic Stockpile-Stockpile |  | 4h | 2014-04-08 08:00 | 2014-04-08 12:00 | 16 |  |  | 0d | Jaisheel; Richard | 8h |  |
| 18 | 7.7 | PGM Closing Stock-PGM |  | 4h | 2014-04-08 13:00 | 2014-04-08 17:00 | 17 |  |  | 0d | Jaisheel; Richard | 8h |  |
| 19 | 7.8 | PGM Opening Stock-PGM |  | 4h | 2014-04-09 08:00 | 2014-04-09 12:00 | 18 |  |  | 0d | Jaisheel; Richard | 8h |  |
| 20 | 7.9 | BMR Ni Stockpile-BMR |  | 4h | 2014-04-09 13:00 | 2014-04-09 17:00 | 19 |  |  | 0d | Jaisheel; Richard | 8h |  |
| 21 | 7.10 | ACP Closing Stock-ACP |  | 4h | 2014-04-10 08:00 | 2014-04-10 12:00 | 20 |  |  | 0d | Jaisheel; Richard | 8h |  |
| 22 | 7.11 | ACP Opening Stock-ACP |  | 4h | 2014-04-10 13:00 | 2014-04-10 17:00 | 21 |  |  | 0d | Jaisheel; Richard | 8h |  |
| 23 | 7.12 | Metal Volumes-Stockpile |  | 4h | 2014-04-11 08:00 | 2014-04-11 12:00 | 22 |  |  | 0d | Jaisheel; Richard | 8h |  |
| 24 | 7.13 | SCF Closing Stock-SCF |  | 4h | 2014-04-11 13:00 | 2014-04-11 17:00 | 23 |  |  | 0d | Jaisheel; Richard | 8h |  |
| 25 | 7.14 | SCF Opening Stock-SCF |  | 4h | 2014-04-14 08:00 | 2014-04-14 12:00 | 24 |  |  | 0d | Jaisheel; Richard | 8h |  |
| 26 | 7.15 | ACP Stockpile-ACP |  | 4h | 2014-04-14 13:00 | 2014-04-14 17:00 | 25 |  |  | 0d | Jaisheel; Richard | 8h |  |
| 27 | 7.16 | SCF Stockpile-SCF |  | 4h | 2014-04-15 08:00 | 2014-04-15 12:00 | 26 |  |  | 0d | Jaisheel; Richard | 8h |  |
| 28 | 7.17 | Object |  | 5d | 2014-04-15 13:00 | 2014-04-24 12:00 | 27 |  |  | 0d | Jaisheel; Richard | 80h |  |
| 29 | 8 | Full Model Load and creation |  | 1d | 2014-04-24 13:00 | 2014-04-25 12:00 | 28 |  |  | 0d | Jaisheel; Richard | 16h |  |
| 30 | 9 | Model Value Testing |  | 1.5d | 2014-04-25 13:00 | 2014-04-29 17:00 | 29 |  |  | 0d | Jaisheel; Richard | 24h |  |
| 31 | 10 | Model Performance |  | 1d | 2014-04-30 08:00 | 2014-04-30 17:00 | 30 |  |  | 0d | Jaisheel; Richard | 16h |  |
| 32 | 11 | Custom Cotrem Calculation |  | 10d | 2014-05-02 08:00 | 2014-05-16 17:00 | 31 |  |  | 0d | Jaisheel; Richard | 160h |  |
